# planeacion bigdaddy

Schedule from MS Project, 2016-05-16 to 2016-08-12, costs in $.

## Calendars

- Estándar: Mon-Fri 09:00-13:00, 15:00-19:00; Sat-Sun off.

## Resources

| Resource | Rate |
| --- | --- |
| Administrador de proyecto | 146 |
| Analista | 112 |
| Diseñador | 114 |
| Programador | 99 |
| Administrador de la configuración | 111 |
| Asegurador de la calidad | 104 |
| Cliente |  |
| Tester | 85 |

## Schedule

| ID | WBS | Task | Duration | Start | Finish | Predecessors | Total slack | Free slack | Resources | Work | Cost |
| --- | --- | --- | --- | --- | --- | --- | --- | --- | --- | --- | --- |
| 1 | 1 | **Plan preliminar** | 1d | 2016-05-16 09:00 | 2016-05-16 19:00 |  | 3d | 0d |  | 8h | 1,168 |
| 2 | 1.1 | Generar un WBS del protocolo inicial | 1h | 2016-05-16 09:00 | 2016-05-16 10:00 |  | 3d | 0d | Administrador de proyecto | 1h | 146 |
| 3 | 1.2 | Generar project charter | 1h | 2016-05-16 10:00 | 2016-05-16 11:00 | 2 | 3d | 0d | Administrador de proyecto | 1h | 146 |
| 4 | 1.3 | Plan preliminar del proyecto | 6h | 2016-05-16 11:00 | 2016-05-16 19:00 | 3 | 3d | 0d | Administrador de proyecto | 6h | 876 |
| 5 | 2 | **SW-BIgDaddy** | 63d | 2016-05-17 09:00 | 2016-08-12 09:00 | 1 | 0d |  |  | 500.6h | 53,226.9 |
| 6 | 2.1 | Formacion del equipo | 1h | 2016-05-17 09:00 | 2016-05-17 10:00 | 4 | 30.55d | 0d | Administrador de proyecto | 1h | 146 |
| 7 | 2.2 | **Fase (iteracion Uno)** | 15.6d | 2016-05-17 10:00 | 2016-06-07 16:48 | 6 | 30.55d | 0d |  | 268.3h | 29,754.2 |
| 8 | 2.2.1 | **Analisis** | 5.25d | 2016-05-17 10:00 | 2016-05-24 12:00 | 6 | 30.55d | 0d |  | 121.5h | 13,958.5 |
| 9 | 2.2.1.1 | **Elicitacion** | 2.44d | 2016-05-17 10:00 | 2016-05-19 15:30 | 6 | 30.55d | 0d |  | 46h | 4,919 |
| 10 | 2.2.1.1.1 | Generar lista de proveedores | 0.5h | 2016-05-17 10:00 | 2016-05-17 10:30 | 6 | 30.55d | 0d | Administrador de proyecto | 0.5h | 73 |
| 11 | 2.2.1.1.2 | Evaluar proveedores de requerimientos | 0.5h | 2016-05-17 10:30 | 2016-05-17 11:00 | 10 | 30.55d | 0d | Administrador de proyecto | 0.5h | 73 |
| 12 | 2.2.1.1.3 | Definicion de estrategia de recoleccion de datos | 0.5h | 2016-05-17 11:00 | 2016-05-17 11:30 | 11 | 30.55d | 0d | Administrador de proyecto; Analista | 1h | 129 |
| 13 | 2.2.1.1.4 | Planear reuniones de licitación | 2h | 2016-05-17 11:30 | 2016-05-17 15:30 | 12 | 30.55d | 0d | Administrador de proyecto; Analista | 4h | 516 |
| 14 | 2.2.1.1.5 | Identificar procesos del sistema(opcional) | 8h | 2016-05-17 15:30 | 2016-05-18 15:30 | 13 | 30.55d | 0d | Administrador de proyecto; Analista; Cliente | 24h | 2,064 |
| 15 | 2.2.1.1.6 | Identificar requerimientos fucnionales | 6h | 2016-05-18 15:30 | 2016-05-19 11:30 | 14 | 30.55d | 0d | Administrador de proyecto; Analista | 12h | 1,548 |
| 16 | 2.2.1.1.7 | Identificar requerimientos no fucnionales | 2h | 2016-05-19 11:30 | 2016-05-19 15:30 | 15 | 30.55d | 0d | Administrador de proyecto; Analista | 4h | 516 |
| 17 | 2.2.1.2 | **Especificacion** | 2.25d | 2016-05-19 15:30 | 2016-05-23 17:30 | 9 | 30.55d | 0d |  | 68h | 8,084 |
| 18 | 2.2.1.2.1 | Evaluar los requerimientos | 2h | 2016-05-19 15:30 | 2016-05-19 17:30 | 16 | 30.55d | 0d | Administrador de proyecto; Analista | 4h | 516 |
| 19 | 2.2.1.2.2 | SRS | 16h | 2016-05-19 17:30 | 2016-05-23 17:30 | 18 | 30.55d | 0d | Administrador de la configuración; Administrador de proyecto; Analista; Asegurador de la calidad | 64h | 7,568 |
| 20 | 2.2.1.3 | **Gestion de requerimientos** | 0.56d | 2016-05-23 17:30 | 2016-05-24 12:00 | 17 | 30.55d |  |  | 7.5h | 955.5 |
| 21 | 2.2.1.3.1 | Priorizar los requerimientos | 1h | 2016-05-23 17:30 | 2016-05-23 18:30 | 19 | 30.55d | 0d | Administrador de proyecto; Analista; Diseñador | 3h | 372 |
| 22 | 2.2.1.3.2 | Almacenar en repositorio | 0.5h | 2016-05-23 18:30 | 2016-05-23 19:00 | 21 | 30.55d | 0d | Administrador de la configuración; Administrador de proyecto | 1h | 128.5 |
| 23 | 2.2.1.3.3 | Asignar a desarrolladores de software | 2h | 2016-05-24 09:00 | 2016-05-24 11:00 | 22 | 30.55d | 0d | Administrador de proyecto | 2h | 292 |
| 24 | 2.2.1.3.4 | Administracion de cambios de requerimientos | 0.5h | 2016-05-24 11:00 | 2016-05-24 11:30 | 23 | 30.55d | 0d | Administrador de la configuración | 0.5h | 55.5 |
| 25 | 2.2.1.3.5 | Administracion de la trazabilidad de requerimientos | 0.5h | 2016-05-24 11:30 | 2016-05-24 12:00 | 24 | 30.55d | 0d | Administrador de la configuración; Asegurador de la calidad | 1h | 107.5 |

| ID | WBS | Task | Duration | Start | Finish | Predecessors | Total slack | Free slack | Resources | Work | Cost |
| --- | --- | --- | --- | --- | --- | --- | --- | --- | --- | --- | --- |
| 26 | 2.2.2 | **Planificacion** | 2.12d | 2016-05-24 12:00 | 2016-05-26 13:00 | 8 | 30.55d | 0d |  | 47h | 5,548.5 |
| 27 | 2.2.2.1 | Definicion del ciclo de vida | 0.5h | 2016-05-24 12:00 | 2016-05-24 12:30 | 25 | 30.55d | 0d | Administrador de proyecto; Analista; Asegurador de la calidad | 1.5h | 181 |
| 28 | 2.2.2.2 | Politicas del proyecto | 0.5h | 2016-05-24 12:30 | 2016-05-24 13:00 | 27 | 30.55d | 0d | Administrador de la configuración; Administrador de proyecto; Asegurador de la calidad | 1.5h | 180.5 |
| 29 | 2.2.2.3 | Actualizar plan del proyecto | 1h | 2016-05-24 15:00 | 2016-05-24 16:00 | 28 | 30.55d | 0d | Administrador de la configuración; Administrador de proyecto; Asegurador de la calidad | 3h | 361 |
| 30 | 2.2.2.4 | **Estimacion** | 0.62d | 2016-05-24 16:00 | 2016-05-25 11:00 |  | 30.55d | 0d |  | 13h | 1,583 |
| 31 | 2.2.2.4.1 | Actualizar WBS/calendario | 1h | 2016-05-24 16:00 | 2016-05-24 17:00 | 29 | 30.55d | 0d | Administrador de proyecto; Asegurador de la calidad | 2h | 250 |
| 32 | 2.2.2.4.2 | Diccionario del WBS | 3h | 2016-05-24 17:00 | 2016-05-25 10:00 | 31 | 30.55d | 0d | Administrador de la configuración; Administrador de proyecto; Asegurador de la calidad | 9h | 1,083 |
| 33 | 2.2.2.4.3 | Costos | 1h | 2016-05-25 10:00 | 2016-05-25 11:00 | 32 | 30.55d | 0d | Administrador de proyecto; Asegurador de la calidad | 2h | 250 |
| 34 | 2.2.2.5 | **Riesgos** | 0.88d | 2016-05-25 11:00 | 2016-05-26 10:00 | 30 | 30.55d | 0d |  | 14h | 1,750 |
| 35 | 2.2.2.5.1 | Identificacion de riesgos | 2h | 2016-05-25 11:00 | 2016-05-25 13:00 | 33 | 30.55d | 0d | Administrador de proyecto; Asegurador de la calidad | 4h | 500 |
| 36 | 2.2.2.5.2 | Asignacion de prioridades | 1h | 2016-05-25 15:00 | 2016-05-25 16:00 | 35 | 30.55d | 0d | Administrador de proyecto; Asegurador de la calidad | 2h | 250 |
| 37 | 2.2.2.5.3 | Plan mitigacion y contingencia | 4h | 2016-05-25 16:00 | 2016-05-26 10:00 | 36 | 30.55d | 0d | Administrador de proyecto; Asegurador de la calidad | 8h | 1,000 |
| 38 | 2.2.2.6 | **Asignacion de la calidad** | 0.38d | 2016-05-26 10:00 | 2016-05-26 13:00 | 34 | 30.55d |  |  | 14h | 1,493 |
| 39 | 2.2.2.6.1 | Plan de gestion de la configuracion | 2h | 2016-05-26 10:00 | 2016-05-26 12:00 | 37 | 30.55d | 0d | Administrador de la configuración; Administrador de proyecto; Asegurador de la calidad | 6h | 722 |
| 40 | 2.2.2.6.2 | Junta de arranque de construccion | 1h | 2016-05-26 12:00 | 2016-05-26 13:00 | 39 | 30.55d | 0d | Administrador de la configuración; Administrador de proyecto; Analista; Asegurador de la calidad; Cliente; Diseñador; Programador; Tester | 8h | 771 |
| 41 | 2.2.3 | **Diseño** | 3.5d | 2016-05-26 15:00 | 2016-05-31 19:00 | 26 | 30.55d | 0d |  | 62h | 6,701 |
| 42 | 2.2.3.1 | Definicion de la Arquitectura | 3h | 2016-05-26 15:00 | 2016-05-26 18:00 | 40 | 30.55d | 0d | Administrador de la configuración; Administrador de proyecto; Asegurador de la calidad; Diseñador | 12h | 1,425 |
| 43 | 2.2.3.2 | **Diagramas UML** | 1.62d | 2016-05-26 18:00 | 2016-05-30 13:00 | 42 | 30.55d | 1d |  | 30h | 3,354 |
| 44 | 2.2.3.2.1 | Diagramas de caso de uso | 3h | 2016-05-26 18:00 | 2016-05-27 11:00 | 42 | 30.55d | 0d | Analista; Diseñador | 6h | 678 |
| 45 | 2.2.3.2.2 | Diagrama de secuencia | 2h | 2016-05-27 11:00 | 2016-05-27 13:00 | 44 | 30.55d | 0d | Analista; Diseñador | 4h | 452 |
| 46 | 2.2.3.2.3 | Diagrama de clases | 2h | 2016-05-27 15:00 | 2016-05-27 17:00 | 45 | 30.55d | 0d | Analista; Diseñador | 4h | 452 |
| 47 | 2.2.3.2.4 | Diagrama de componentes | 4h | 2016-05-27 17:00 | 2016-05-30 11:00 | 46 | 30.55d | 0d | Analista; Asegurador de la calidad; Diseñador | 12h | 1,320 |
| 48 | 2.2.3.2.5 | Diagrama de Despliegue | 2h | 2016-05-30 11:00 | 2016-05-30 13:00 | 47 | 30.55d | 0d | Analista; Diseñador | 4h | 452 |
| 49 | 2.2.3.3 | Mapa de nevegacion | 3h | 2016-05-30 15:00 | 2016-05-30 18:00 | 48 | 30.55d | 0d | Analista; Cliente | 6h | 336 |
| 50 | 2.2.3.4 | Maquetacion | 5h | 2016-05-30 18:00 | 2016-05-31 13:00 | 49 | 30.55d | 0d | Analista; Diseñador | 10h | 1,130 |

| ID | WBS | Task | Duration | Start | Finish | Predecessors | Total slack | Free slack | Resources | Work | Cost |
| --- | --- | --- | --- | --- | --- | --- | --- | --- | --- | --- | --- |
| 51 | 2.2.3.5 | **Base de datos** | 0.5d | 2016-05-31 15:00 | 2016-05-31 19:00 | 43 | 30.55d |  |  | 4h | 456 |
| 52 | 2.2.3.5.1 | Diagrama E-R | 3h | 2016-05-31 15:00 | 2016-05-31 18:00 | 50 | 30.55d | 0d | Diseñador | 3h | 342 |
| 53 | 2.2.3.5.2 | Diagrama relacional | 1h | 2016-05-31 18:00 | 2016-05-31 19:00 | 52 | 30.55d | 0d | Diseñador | 1h | 114 |
| 54 | 2.2.4 | **Codificacion** | 2.98d | 2016-06-01 09:00 | 2016-06-03 18:48 | 41 | 30.55d | 0d |  | 23.8h | 2,356.2 |
| 55 | 2.2.4.1 | Codificacion de la base de datos | 2h | 2016-06-01 09:00 | 2016-06-01 11:00 | 53 | 30.55d | 0d | Programador | 2h | 198 |
| 56 | 2.2.4.2 | **Modulo de usuarios** | 1.36d | 2016-06-01 11:00 | 2016-06-02 15:54 | 55 | 30.55d | 0d |  | 10.9h | 1,079.1 |
| 57 | 2.2.4.2.1 | Interfaz | 2h | 2016-06-01 11:00 | 2016-06-01 13:00 | 55 | 30.55d | 0d | Programador | 2h | 198 |
| 58 | 2.2.4.2.2 | Clases de usuario | 6h | 2016-06-01 15:00 | 2016-06-02 11:00 | 57 | 30.55d | 0d | Programador | 6h | 594 |
| 59 | 2.2.4.2.3 | Conexión a BD | 0.5h | 2016-06-02 11:00 | 2016-06-02 11:30 | 58 | 30.55d | 0d | Programador | 0.5h | 49.5 |
| 60 | 2.2.4.2.4 | Insertar usuario | 0.2h | 2016-06-02 11:30 | 2016-06-02 11:42 | 59 | 30.55d | 0d | Programador | 0.2h | 19.8 |
| 61 | 2.2.4.2.5 | Borrar usuario | 0.2h | 2016-06-02 11:42 | 2016-06-02 11:54 | 60 | 30.55d | 0d | Programador | 0.2h | 19.8 |
| 62 | 2.2.4.2.6 | Modificacion de usuario | 0.5h | 2016-06-02 11:54 | 2016-06-02 12:24 | 61 | 30.55d | 0d | Programador | 0.5h | 49.5 |
| 63 | 2.2.4.2.7 | Consulta de usuario | 0.5h | 2016-06-02 12:24 | 2016-06-02 12:54 | 62 | 30.55d | 0d | Programador | 0.5h | 49.5 |
| 64 | 2.2.4.2.8 | Reporte de usuarios | 1h | 2016-06-02 12:54 | 2016-06-02 15:54 | 63 | 30.55d | 0d | Programador | 1h | 99 |
| 65 | 2.2.4.3 | **Modulo de productos** | 1.36d | 2016-06-02 15:54 | 2016-06-03 18:48 | 56 | 30.55d |  |  | 10.9h | 1,079.1 |
| 66 | 2.2.4.3.1 | Interfaz | 2h | 2016-06-02 15:54 | 2016-06-02 17:54 | 64 | 30.55d | 0d | Programador | 2h | 198 |
| 67 | 2.2.4.3.2 | Clases de productos | 6h | 2016-06-02 17:54 | 2016-06-03 15:54 | 66 | 30.55d | 0d | Programador | 6h | 594 |
| 68 | 2.2.4.3.3 | Conexión a BD | 0.5h | 2016-06-03 15:54 | 2016-06-03 16:24 | 67 | 30.55d | 0d | Programador | 0.5h | 49.5 |
| 69 | 2.2.4.3.4 | Insertar producto | 0.2h | 2016-06-03 16:24 | 2016-06-03 16:36 | 68 | 30.55d | 0d | Programador | 0.2h | 19.8 |
| 70 | 2.2.4.3.5 | Borrar producto | 0.2h | 2016-06-03 16:36 | 2016-06-03 16:48 | 69 | 30.55d | 0d | Programador | 0.2h | 19.8 |
| 71 | 2.2.4.3.6 | Modificacion de producto | 0.5h | 2016-06-03 16:48 | 2016-06-03 17:18 | 70 | 30.55d | 0d | Programador | 0.5h | 49.5 |
| 72 | 2.2.4.3.7 | Consulta de producto | 0.5h | 2016-06-03 17:18 | 2016-06-03 17:48 | 71 | 30.55d | 0d | Programador | 0.5h | 49.5 |
| 73 | 2.2.4.3.8 | Reporte de productos | 1h | 2016-06-03 17:48 | 2016-06-03 18:48 | 72 | 30.55d | 0d | Programador | 1h | 99 |
| 74 | 2.2.5 | **Pruebas** | 1.75d | 2016-06-03 18:48 | 2016-06-07 16:48 | 54 | 30.55d |  |  | 14h | 1,190 |
| 75 | 2.2.5.1 | **Caja Blanca** | 1.75d | 2016-06-03 18:48 | 2016-06-07 16:48 | 54 | 30.55d |  |  | 14h | 1,190 |
| 76 | 2.2.5.1.1 | **Modulo de Usuarios** | 0.5d | 2016-06-03 18:48 | 2016-06-06 12:48 | 54 | 30.55d | 0d |  | 4h | 340 |
| 77 | 2.2.5.1.1.1 | Pruebas unitarias | 2h | 2016-06-03 18:48 | 2016-06-06 10:48 | 73 | 30.55d | 0d | Tester | 2h | 170 |
| 78 | 2.2.5.1.1.2 | Pruebas de modulo | 2h | 2016-06-06 10:48 | 2016-06-06 12:48 | 77 | 30.55d | 0d | Tester | 2h | 170 |

| ID | WBS | Task | Duration | Start | Finish | Predecessors | Total slack | Free slack | Resources | Work | Cost |
| --- | --- | --- | --- | --- | --- | --- | --- | --- | --- | --- | --- |
| 79 | 2.2.5.1.2 | **Modulo de productos** | 0.5d | 2016-06-06 12:48 | 2016-06-06 18:48 | 76 | 30.55d |  |  | 4h | 340 |
| 80 | 2.2.5.1.2.1 | Pruebas unitarias | 2h | 2016-06-06 12:48 | 2016-06-06 16:48 | 78 | 30.55d | 0d | Tester | 2h | 170 |
| 81 | 2.2.5.1.2.2 | Pruebas de modulo | 2h | 2016-06-06 16:48 | 2016-06-06 18:48 | 80 | 30.55d | 0d | Tester | 2h | 170 |
| 82 | 2.2.5.1.3 | Pruebas de sistema | 3h | 2016-06-06 18:48 | 2016-06-07 11:48 | 81 | 30.55d | 0d | Tester | 3h | 255 |
| 83 | 2.2.5.1.4 | Pruebas de integracion | 3h | 2016-06-07 11:48 | 2016-06-07 16:48 | 82 | 30.55d | 0d | Tester | 3h | 255 |
| 84 | 2.3 | **Fase (iteracion Dos)** | 13.47d | 2016-06-07 16:48 | 2016-06-27 10:36 | 7 | 30.55d | 0d |  | 202.3h | 21,833.7 |
| 85 | 2.3.1 | **Analisis** | 3.62d | 2016-06-07 16:48 | 2016-06-13 11:48 | 7 | 30.55d | 0d |  | 73.5h | 8,063.5 |
| 86 | 2.3.1.1 | **Elicitacion** | 1.88d | 2016-06-07 16:48 | 2016-06-09 15:48 | 7 | 30.55d | 0d |  | 37h | 3,870 |
| 87 | 2.3.1.1.1 | Identificar procesos del sistema(opcional) | 7h | 2016-06-07 16:48 | 2016-06-08 15:48 | 83 | 30.55d | 0d | Administrador de proyecto; Analista; Cliente | 21h | 1,806 |
| 88 | 2.3.1.1.2 | Identificar requerimientos fucnionales | 6h | 2016-06-08 15:48 | 2016-06-09 11:48 | 87 | 30.55d | 0d | Administrador de proyecto; Analista | 12h | 1,548 |
| 89 | 2.3.1.1.3 | Identificar requerimientos no fucnionales | 2h | 2016-06-09 11:48 | 2016-06-09 15:48 | 88 | 30.55d | 0d | Administrador de proyecto; Analista | 4h | 516 |
| 90 | 2.3.1.2 | **Especificacion** | 1.25d | 2016-06-09 15:48 | 2016-06-10 17:48 | 86 | 30.55d | 0d |  | 28h | 3,132 |
| 91 | 2.3.1.2.1 | Evaluar los requerimientos | 2h | 2016-06-09 15:48 | 2016-06-09 17:48 | 89 | 30.55d | 0d | Administrador de proyecto; Analista | 4h | 516 |
| 92 | 2.3.1.2.2 | SRS | 8h | 2016-06-09 17:48 | 2016-06-10 17:48 | 91 | 30.55d | 0d | Administrador de la configuración; Analista; Asegurador de la calidad | 24h | 2,616 |
| 93 | 2.3.1.3 | **Gestion de requerimientos** | 0.5d | 2016-06-10 17:48 | 2016-06-13 11:48 | 90 | 30.55d |  |  | 8.5h | 1,061.5 |
| 94 | 2.3.1.3.1 | Priorizar los requerimientos | 1h | 2016-06-10 17:48 | 2016-06-10 18:48 | 92 | 30.55d | 0d | Administrador de proyecto; Analista | 2h | 258 |
| 95 | 2.3.1.3.2 | Almacenar en repositorio | 0.5h | 2016-06-10 18:48 | 2016-06-13 09:18 | 94 | 30.55d | 0d | Administrador de la configuración | 0.5h | 55.5 |
| 96 | 2.3.1.3.3 | Asignar a desarrolladores de software | 1.5h | 2016-06-13 09:18 | 2016-06-13 10:48 | 95 | 30.55d | 0d | Administrador de proyecto; Analista | 3h | 387 |
| 97 | 2.3.1.3.4 | Administracion de cambios de requerimientos | 0.5h | 2016-06-13 10:48 | 2016-06-13 11:18 | 96 | 30.55d | 0d | Administrador de la configuración; Administrador de proyecto; Asegurador de la calidad | 1.5h | 180.5 |
| 98 | 2.3.1.3.5 | Administracion de la trazabilidad de requerimientos | 0.5h | 2016-06-13 11:18 | 2016-06-13 11:48 | 97 | 30.55d | 0d | Administrador de la configuración; Administrador de proyecto; Asegurador de la calidad | 1.5h | 180.5 |
| 99 | 2.3.2 | **Planificacion** | 1.75d | 2016-06-13 11:48 | 2016-06-15 09:48 | 85 | 30.55d | 0d |  | 42h | 4,938 |
| 100 | 2.3.2.1 | Actualizar plan del proyecto | 1h | 2016-06-13 11:48 | 2016-06-13 12:48 | 98 | 30.55d | 0d | Administrador de la configuración; Administrador de proyecto; Asegurador de la calidad | 3h | 361 |
| 101 | 2.3.2.2 | **Estimacion** | 0.5d | 2016-06-13 12:48 | 2016-06-13 18:48 | 100 | 30.55d | 0d |  | 8h | 1,014 |
| 102 | 2.3.2.2.1 | Actualizar WBS/calendario | 1h | 2016-06-13 12:48 | 2016-06-13 15:48 | 100 | 30.55d | 0d | Administrador de proyecto | 1h | 146 |
| 103 | 2.3.2.2.2 | Actualizar Diccionario del WBS | 2h | 2016-06-13 15:48 | 2016-06-13 17:48 | 102 | 30.55d | 0d | Administrador de la configuración; Administrador de proyecto; Asegurador de la calidad | 6h | 722 |
| 104 | 2.3.2.2.3 | Actualizar los Costos | 1h | 2016-06-13 17:48 | 2016-06-13 18:48 | 103 | 30.55d | 0d | Administrador de proyecto | 1h | 146 |

| ID | WBS | Task | Duration | Start | Finish | Predecessors | Total slack | Free slack | Resources | Work | Cost |
| --- | --- | --- | --- | --- | --- | --- | --- | --- | --- | --- | --- |
| 105 | 2.3.2.3 | **Riesgos** | 1d | 2016-06-13 18:48 | 2016-06-14 18:48 | 101 | 30.55d | 0d |  | 23h | 2,792 |
| 106 | 2.3.2.3.1 | Identificacion de riesgos | 3h | 2016-06-13 18:48 | 2016-06-14 11:48 | 104 | 30.55d | 0d | Administrador de proyecto; Analista; Asegurador de la calidad | 9h | 1,086 |
| 107 | 2.3.2.3.2 | Asignacion de prioridades | 1h | 2016-06-14 11:48 | 2016-06-14 12:48 | 106 | 30.55d | 0d | Administrador de proyecto; Analista | 2h | 258 |
| 108 | 2.3.2.3.3 | Plan mitigacion y contingencia | 4h | 2016-06-14 12:48 | 2016-06-14 18:48 | 107 | 30.55d | 0d | Administrador de proyecto; Analista; Asegurador de la calidad | 12h | 1,448 |
| 109 | 2.3.2.4 | **Aseguramiento de la calidad** | 0.12d | 2016-06-14 18:48 | 2016-06-15 09:48 | 105 | 30.55d |  |  | 8h | 771 |
| 110 | 2.3.2.4.1 | Junta de arranque de construccion de Segunda Interacion | 1h | 2016-06-14 18:48 | 2016-06-15 09:48 | 108 | 30.55d | 0d | Administrador de proyecto; Administrador de la configuración; Analista; Asegurador de la calidad; Cliente; Diseñador; Programador; Tester | 8h | 771 |
| 111 | 2.3.3 | **Diseño** | 2.38d | 2016-06-15 09:48 | 2016-06-17 12:48 | 99 | 30.55d | 0d |  | 41h | 4,606 |
| 112 | 2.3.3.1 | **Diagramas UML** | 1.88d | 2016-06-15 09:48 | 2016-06-16 18:48 | 110 | 30.55d |  |  | 33h | 3,702 |
| 113 | 2.3.3.1.1 | Diagramas de caso de uso | 3h | 2016-06-15 09:48 | 2016-06-15 12:48 | 110 | 30.55d | 0d | Analista; Diseñador | 6h | 678 |
| 114 | 2.3.3.1.2 | Diagrama de secuencia | 2h | 2016-06-15 12:48 | 2016-06-15 16:48 | 113 | 30.55d | 0d | Analista; Diseñador | 4h | 452 |
| 115 | 2.3.3.1.3 | Actualizar Diagrama de clases | 4h | 2016-06-15 16:48 | 2016-06-16 10:48 | 114 | 30.55d | 0d | Analista; Diseñador | 8h | 904 |
| 116 | 2.3.3.1.4 | Actualizar Diagrama de componentes | 3h | 2016-06-16 10:48 | 2016-06-16 15:48 | 115 | 30.55d | 0d | Analista; Asegurador de la calidad; Diseñador | 9h | 990 |
| 117 | 2.3.3.1.5 | Actualizar Diagrama de Despliegue | 3h | 2016-06-16 15:48 | 2016-06-16 18:48 | 116 | 30.55d | 0d | Analista; Diseñador | 6h | 678 |
| 118 | 2.3.3.2 | Actualizar Maquetacion | 4h | 2016-06-16 18:48 | 2016-06-17 12:48 | 117 | 30.55d | 0d | Analista; Diseñador | 8h | 904 |
| 119 | 2.3.4 | **Codificacion** | 2.98d | 2016-06-17 12:48 | 2016-06-22 12:36 | 111 | 30.55d | 0d |  | 23.8h | 2,356.2 |
| 120 | 2.3.4.1 | Codificacion de la base de datos | 2h | 2016-06-17 12:48 | 2016-06-17 16:48 | 118 | 30.55d | 0d | Programador | 2h | 198 |
| 121 | 2.3.4.2 | **Modulo de usuarios** | 1.36d | 2016-06-17 16:48 | 2016-06-21 09:42 | 120 | 30.55d | 0d |  | 10.9h | 1,079.1 |
| 122 | 2.3.4.2.1 | Interfaz | 2h | 2016-06-17 16:48 | 2016-06-17 18:48 | 120 | 30.55d | 0d | Programador | 2h | 198 |
| 123 | 2.3.4.2.2 | Clases de usuario | 6h | 2016-06-17 18:48 | 2016-06-20 16:48 | 122 | 30.55d | 0d | Programador | 6h | 594 |
| 124 | 2.3.4.2.3 | Conexión a BD | 0.5h | 2016-06-20 16:48 | 2016-06-20 17:18 | 123 | 30.55d | 0d | Programador | 0.5h | 49.5 |
| 125 | 2.3.4.2.4 | Insertar usuario | 0.2h | 2016-06-20 17:18 | 2016-06-20 17:30 | 124 | 30.55d | 0d | Programador | 0.2h | 19.8 |
| 126 | 2.3.4.2.5 | Borrar usuario | 0.2h | 2016-06-20 17:30 | 2016-06-20 17:42 | 125 | 30.55d | 0d | Programador | 0.2h | 19.8 |
| 127 | 2.3.4.2.6 | Modificacion de usuario | 0.5h | 2016-06-20 17:42 | 2016-06-20 18:12 | 126 | 30.55d | 0d | Programador | 0.5h | 49.5 |
| 128 | 2.3.4.2.7 | Consulta de usuario | 0.5h | 2016-06-20 18:12 | 2016-06-20 18:42 | 127 | 30.55d | 0d | Programador | 0.5h | 49.5 |
| 129 | 2.3.4.2.8 | Reporte de usuarios | 1h | 2016-06-20 18:42 | 2016-06-21 09:42 | 128 | 30.55d | 0d | Programador | 1h | 99 |

| ID | WBS | Task | Duration | Start | Finish | Predecessors | Total slack | Free slack | Resources | Work | Cost |
| --- | --- | --- | --- | --- | --- | --- | --- | --- | --- | --- | --- |
| 130 | 2.3.4.3 | **Modulo de productos** | 1.36d | 2016-06-21 09:42 | 2016-06-22 12:36 | 121 | 30.55d |  |  | 10.9h | 1,079.1 |
| 131 | 2.3.4.3.1 | Interfaz | 2h | 2016-06-21 09:42 | 2016-06-21 11:42 | 129 | 30.55d | 0d | Programador | 2h | 198 |
| 132 | 2.3.4.3.2 | Clases de productos | 6h | 2016-06-21 11:42 | 2016-06-22 09:42 | 131 | 30.55d | 0d | Programador | 6h | 594 |
| 133 | 2.3.4.3.3 | Conexión a BD | 0.5h | 2016-06-22 09:42 | 2016-06-22 10:12 | 132 | 30.55d | 0d | Programador | 0.5h | 49.5 |
| 134 | 2.3.4.3.4 | Insertar producto | 0.2h | 2016-06-22 10:12 | 2016-06-22 10:24 | 133 | 30.55d | 0d | Programador | 0.2h | 19.8 |
| 135 | 2.3.4.3.5 | Borrar producto | 0.2h | 2016-06-22 10:24 | 2016-06-22 10:36 | 134 | 30.55d | 0d | Programador | 0.2h | 19.8 |
| 136 | 2.3.4.3.6 | Modificacion de producto | 0.5h | 2016-06-22 10:36 | 2016-06-22 11:06 | 135 | 30.55d | 0d | Programador | 0.5h | 49.5 |
| 137 | 2.3.4.3.7 | Consulta de producto | 0.5h | 2016-06-22 11:06 | 2016-06-22 11:36 | 136 | 30.55d | 0d | Programador | 0.5h | 49.5 |
| 138 | 2.3.4.3.8 | Reporte de productos | 1h | 2016-06-22 11:36 | 2016-06-22 12:36 | 137 | 30.55d | 0d | Programador | 1h | 99 |
| 139 | 2.3.5 | **Pruebas** | 2.75d | 2016-06-22 12:36 | 2016-06-27 10:36 | 119 | 30.55d |  |  | 22h | 1,870 |
| 140 | 2.3.5.1 | **Caja Blanca** | 2.75d | 2016-06-22 12:36 | 2016-06-27 10:36 | 138 | 30.55d |  |  | 22h | 1,870 |
| 141 | 2.3.5.1.1 | **Modulo de Usuarios** | 1d | 2016-06-22 12:36 | 2016-06-23 12:36 | 138 | 30.55d | 0d |  | 8h | 680 |
| 142 | 2.3.5.1.1.1 | Pruebas unitarias | 4h | 2016-06-22 12:36 | 2016-06-22 18:36 | 138 | 30.55d | 0d | Tester | 4h | 340 |
| 143 | 2.3.5.1.1.2 | Pruebas de modulo | 4h | 2016-06-22 18:36 | 2016-06-23 12:36 | 142 | 30.55d | 0d | Tester | 4h | 340 |
| 144 | 2.3.5.1.2 | **Modulo de productos** | 1.25d | 2016-06-23 12:36 | 2016-06-24 16:36 | 141 | 30.55d |  |  | 10h | 850 |
| 145 | 2.3.5.1.2.1 | Pruebas unitarias | 5h | 2016-06-23 12:36 | 2016-06-24 09:36 | 143 | 30.55d | 0d | Tester | 5h | 425 |
| 146 | 2.3.5.1.2.2 | Pruebas de modulo | 5h | 2016-06-24 09:36 | 2016-06-24 16:36 | 145 | 30.55d | 0d | Tester | 5h | 425 |
| 147 | 2.3.5.1.3 | Pruebas de sistema | 2h | 2016-06-24 16:36 | 2016-06-24 18:36 | 146 | 30.55d | 0d | Tester | 2h | 170 |
| 148 | 2.3.5.1.4 | Pruebas de integracion | 2h | 2016-06-24 18:36 | 2016-06-27 10:36 | 147 | 30.55d | 0d | Tester | 2h | 170 |
| 149 | 2.4 | **Implementacion** | 1.75d | 2016-06-27 10:36 | 2016-06-28 18:36 | 84 | 30.55d | 0d |  | 17h | 1,709 |
| 150 | 2.4.1 | Evaluacion del hosting | 3h | 2016-06-27 10:36 | 2016-06-27 15:36 | 148 | 30.55d | 0d | Tester | 3h | 255 |
| 151 | 2.4.2 | Implementar la aplicación del Host | 3h | 2016-06-27 15:36 | 2016-06-27 18:36 | 150 | 30.55d | 0d | Administrador de proyecto; Analista | 6h | 774 |
| 152 | 2.4.3 | Pruebas de sistema | 4h | 2016-06-27 18:36 | 2016-06-28 12:36 | 151 | 30.55d | 0d | Tester | 4h | 340 |
| 153 | 2.4.4 | Pruebas de rendimiento | 4h | 2016-06-28 12:36 | 2016-06-28 18:36 | 152 | 30.55d | 0d | Tester | 4h | 340 |

| ID | WBS | Task | Type | Duration | Start | Finish | Predecessors | Total slack | Free slack | Constraint | Resources | Work | Cost |
| --- | --- | --- | --- | --- | --- | --- | --- | --- | --- | --- | --- | --- | --- |
| 154 | 2.5 | **Cierre de proyecto** |  | 1.5d | 2016-06-28 18:36 | 2016-06-30 12:36 | 149 | 30.55d |  |  |  | 12h | -216 |
| 155 | 2.5.1 | Carta de acceptacion |  | 1h | 2016-06-28 18:36 | 2016-06-29 09:36 | 153 | 30.55d | 0d |  | Administrador de proyecto | 1h | -18 |
| 156 | 2.5.2 | Acta de cierre de proyecto |  | 1h | 2016-06-29 09:36 | 2016-06-29 10:36 | 155 | 30.55d | 0d |  | Administrador de proyecto | 1h | -18 |
| 157 | 2.5.3 | Evaluacion de desempeño |  | 1h | 2016-06-29 10:36 | 2016-06-29 11:36 | 156 | 30.55d | 0d |  | Administrador de proyecto | 1h | -18 |
| 158 | 2.5.4 | Junta de lecciones aprendidas |  | 3h | 2016-06-29 11:36 | 2016-06-29 16:36 | 157 | 30.55d | 0d |  | Administrador de proyecto | 3h | -54 |
| 159 | 2.5.5 | Revicion de adherencias |  | 2h | 2016-06-29 16:36 | 2016-06-29 18:36 | 158 | 30.55d | 0d |  | Administrador de proyecto | 2h | -36 |
| 160 | 2.5.6 | Liberacion de recursos |  | 1h | 2016-06-29 18:36 | 2016-06-30 09:36 | 159 | 30.55d | 0d |  | Administrador de proyecto | 1h | -18 |
| 161 | 2.5.7 | Informe final de proyecto |  | 3h | 2016-06-30 09:36 | 2016-06-30 12:36 | 160 | 30.55d |  |  | Administrador de proyecto | 3h | -54 |
| 162 | 2.6 | **Revicion** |  | 60d | 2016-05-20 09:00 | 2016-08-12 09:00 |  | 0d |  |  |  |  |  |
| 163 | 2.6.1 | Revicion 1 | milestone, manual | 0d | 2016-05-20 09:00 | 2016-05-20 09:00 |  |  |  | start no earlier than 2016-05-20 09:00 |  |  |  |
| 164 | 2.6.2 | Revicion 2 | milestone, manual | 0d | 2016-05-27 09:00 | 2016-05-27 09:00 |  |  |  | start no earlier than 2016-05-27 09:00 |  |  |  |
| 165 | 2.6.3 | Revicion 3 | milestone, manual | 0d | 2016-06-03 09:00 | 2016-06-03 09:00 |  |  |  | start no earlier than 2016-06-03 09:00 |  |  |  |
| 166 | 2.6.4 | Revicion 4 | milestone, manual | 0d | 2016-06-10 09:00 | 2016-06-10 09:00 |  |  |  | start no earlier than 2016-06-10 09:00 |  |  |  |
| 167 | 2.6.5 | Revicion 5 | milestone, manual | 0d | 2016-06-17 09:00 | 2016-06-17 09:00 |  |  |  | start no earlier than 2016-06-17 09:00 |  |  |  |
| 168 | 2.6.6 | Revicion 6 | milestone, manual | 0d | 2016-06-24 09:00 | 2016-06-24 09:00 |  |  |  | start no earlier than 2016-06-24 09:00 |  |  |  |
| 169 | 2.6.7 | Revicion 7 | milestone, manual | 0d | 2016-07-01 09:00 | 2016-07-01 09:00 |  |  |  | start no earlier than 2016-07-01 09:00 |  |  |  |
| 170 | 2.6.8 | Revicion 8 | milestone, manual | 0d | 2016-07-08 09:00 | 2016-07-08 09:00 |  |  |  | start no earlier than 2016-07-08 09:00 |  |  |  |
| 171 | 2.6.9 | Revicion 9 | milestone, manual | 0d | 2016-07-15 09:00 | 2016-07-15 09:00 |  |  |  | start no earlier than 2016-07-15 09:00 |  |  |  |
| 172 | 2.6.10 | Revicion 10 | milestone, manual | 0d | 2016-07-22 09:00 | 2016-07-22 09:00 |  |  |  | start no earlier than 2016-07-22 09:00 |  |  |  |
| 173 | 2.6.11 | Revicion 11 | milestone, manual | 0d | 2016-07-29 09:00 | 2016-07-29 09:00 |  |  |  | start no earlier than 2016-07-29 09:00 |  |  |  |
| 174 | 2.6.12 | Revicion 12 | milestone, manual | 0d | 2016-08-05 09:00 | 2016-08-05 09:00 |  |  |  | start no earlier than 2016-08-05 09:00 |  |  |  |
| 175 | 2.6.13 | Revicion 13 | milestone, manual | 0d | 2016-08-12 09:00 | 2016-08-12 09:00 |  |  |  | start no earlier than 2016-08-12 09:00 |  |  |  |
